# ARKartSmart

Schedule from MS Project, 2015-11-02 to 2016-08-02.

## Calendars

- Standard: Mon-Fri 08:00-12:00, 13:00-17:00; Sat-Sun off.

## Schedule

| ID | WBS | Task | Duration | Start | Finish | Predecessors | Total slack | Free slack |
| --- | --- | --- | --- | --- | --- | --- | --- | --- |
| 1 | 1 | **Hardware, etc** | 195.75d | 2015-11-02 | 2016-08-02 |  | 0d |  |
| 2 | 1.1 | **Tablets** | 97.25d | 2015-11-02 | 2016-03-16 |  | 89.75d |  |
| 3 | 1.1.1 | Order Nexus 9 Tablets | 8h | 2015-11-02 | 2015-11-03 |  | 89.75d | 0d |
| 4 | 1.1.2 | Install Custom ROM | 40h | 2015-11-03 | 2015-11-10 | 3 | 89.75d | 0d |
| 5 | 1.1.3 | Inspect & Test | 40h | 2015-11-10 | 2015-11-17 | 4 | 89.75d | 0d |
| 6 | 1.1.4 | Test Network Connectivity | 20h | 2015-11-17 | 2015-11-19 | 5, 16 | 89.75d | 0d |
| 7 | 1.1.5 | Integrate with ARKSmart Network | 20h | 2015-11-20 | 2015-11-24 | 6 | 89.75d | 0d |
| 8 | 1.1.6 | Mount on Carts | 650h | 2015-11-24 | 2016-03-16 | 26, 7 | 89.75d |  |
| 9 | 1.2 | **Servers** | 7.5d | 2015-11-02 | 2015-11-11 |  | 93.25d | 0d |
| 10 | 1.2.1 | Purchase HQ Hardware | 8h | 2015-11-02 | 2015-11-03 |  | 93.25d | 0d |
| 11 | 1.2.2 | Purchase Store Hardware | 8h | 2015-11-02 | 2015-11-03 |  | 93.25d | 0d |
| 12 | 1.2.3 | Rack Mount Hardware | 12h | 2015-11-03 | 2015-11-04 | 10, 11 | 93.25d | 0d |
| 13 | 1.2.4 | Install OS | 12h | 2015-11-05 | 2015-11-06 | 12 | 93.25d | 0d |
| 14 | 1.2.5 | Patch OS | 12h | 2015-11-06 | 2015-11-09 | 13 | 93.25d | 0d |
| 15 | 1.2.6 | Configure Rack Mounted Networking | 8h | 2015-11-10 | 2015-11-10 | 14 | 93.25d | 0d |
| 16 | 1.2.7 | Test Rack Mounted Network Connectivity | 8h | 2015-11-11 | 2015-11-11 | 15 | 93.25d | 3.5d |
| 17 | 1.3 | **Barcode Scanners** | 34.75d | 2015-11-02 | 2015-12-21 |  | 152.25d |  |
| 18 | 1.3.1 | Purchase | 8h | 2015-11-02 | 2015-11-03 |  | 156d | 0d |
| 19 | 1.3.2 | Inspect & Test | 40h | 2015-11-03 | 2015-11-10 | 18 | 156d | 3.75d |
| 20 | 1.3.3 | Mount on Carts | 200h | 2015-11-16 | 2015-12-21 | 26, 19 | 152.25d |  |
| 21 | 1.4 | **Charging Stations** | 12.25d | 2015-11-02 | 2015-11-18 |  | 183.5d |  |
| 22 | 1.4.1 | Purchase | 8h | 2015-11-02 | 2015-11-03 |  | 183.5d | 0d |
| 23 | 1.4.2 | Assemble | 40h | 2015-11-03 | 2015-11-10 | 22 | 183.5d | 0d |
| 24 | 1.4.3 | Install | 40h | 2015-11-10 | 2015-11-17 | 23 | 183.5d | 0d |
| 25 | 1.4.4 | Test | 10h | 2015-11-17 | 2015-11-18 | 24 | 183.5d |  |

| ID | WBS | Task | Duration | Start | Finish | Predecessors | Total slack | Free slack |
| --- | --- | --- | --- | --- | --- | --- | --- | --- |
| 26 | 1.5 | **Cart Mounting** | 9.75d | 2015-11-02 | 2015-11-16 |  | 96d | 0d |
| 27 | 1.5.1 | Purchase Hardware | 8h | 2015-11-02 | 2015-11-03 |  | 96d | 0d |
| 28 | 1.5.2 | Inspect Hardware | 70h | 2015-11-03 | 2015-11-16 | 27 | 96d |  |
| 29 | 1.6 | **ARKSMart Employee Training** | 8.75d | 2016-07-20 | 2016-08-02 | 85 | 0d |  |
| 30 | 1.6.1 | Tablet & Barcode Scanner Operation | 70h | 2016-07-20 | 2016-08-02 | 2, 17 | 0d |  |
| 31 | 1.6.2 | Tablet Repair/Replacement | 20h | 2016-07-20 | 2016-07-22 | 2 | 6.25d |  |
| 32 | 1.6.3 | Barcode Scanner Replacement | 10h | 2016-07-20 | 2016-07-21 | 17 | 7.5d |  |
| 33 | 1.7 | **Branding** | 36d | 2015-11-02 | 2015-12-22 |  | 159.75d |  |
| 34 | 1.7.1 | Tablet Branding Design | 80h | 2015-11-02 | 2015-11-16 |  | 159.75d | 0d |
| 35 | 1.7.2 | Order/Purchase Branding for Tablets | 8h | 2015-11-16 | 2015-11-17 | 34 | 159.75d | 0d |
| 36 | 1.7.3 | Install Tablet Branding | 200h | 2015-11-17 | 2015-12-22 | 5, 35 | 159.75d |  |
| 37 | 1.8 | **Documentation** | 157.5d | 2015-11-12 | 2016-06-20 |  | 30.75d |  |
| 38 | 1.8.1 | ARKSmart Network Configuration | 40h | 2015-11-12 | 2015-11-18 | 9 | 183.25d |  |
| 39 | 1.8.2 | Software User Guide | 40h | 2016-06-13 | 2016-06-20 | 69 | 30.75d |  |
| 40 | 2 | **Software** | 187d | 2015-11-02 | 2016-07-20 |  | 0d |  |
| 41 | 2.1 | **Agile Sprint 1 - Software Requirements** | 2.5d | 2015-11-02 | 2015-11-04 |  | 0d |  |
| 42 | 2.1.1 | Develop Software Requirements | 16h | 2015-11-02 | 2015-11-04 |  | 0d |  |
| 43 | 2.1.2 | Work Product Inspection (WPI) - Software Requirements Review | 4h | 2015-11-04 | 2015-11-04 | 42 | 0d |  |
| 44 | 2.2 | **Agile Sprint 2 - Software Architecture/Design** | 6d | 2015-11-05 | 2015-11-12 | 41 | 0d |  |
| 45 | 2.2.1 | Develop/Customize Architecture/Design | 40h | 2015-11-05 | 2015-11-11 |  | 0d |  |
| 46 | 2.2.2 | WPI - Software Design Review | 8h | 2015-11-12 | 2015-11-12 | 45 | 0d |  |
| 47 | 2.2.3 | COTS Selection/Approval | 20h | 2015-11-05 | 2015-11-09 |  | 3.5d |  |
| 48 | 2.3 | **Agile Sprint 3 - Software Environment** | 2.5d | 2015-11-13 | 2015-11-17 | 44 | 0d |  |
| 49 | 2.3.1 | Software Lab Environment Setup | 16h | 2015-11-13 | 2015-11-16 |  | 0d |  |
| 50 | 2.3.2 | Software Lab Environment Validation | 4h | 2015-11-17 | 2015-11-17 | 49 | 0d |  |
| 51 | 2.3.3 | Test Tool Selection/Approval/Development | 16h | 2015-11-13 | 2015-11-16 |  | 0.5d |  |

| ID | WBS | Task | Duration | Start | Finish | Predecessors | Total slack |
| --- | --- | --- | --- | --- | --- | --- | --- |
| 52 | 2.4 | **Agile Sprint 4 - Inventory System** | 44.5d | 2015-11-17 | 2016-01-18 | 48 | 0d |
| 53 | 2.4.1 | Inventory System Integration Development | 280h | 2015-11-17 | 2016-01-05 |  | 0d |
| 54 | 2.4.2 | **Testing** | 9d | 2016-01-05 | 2016-01-18 | 53 | 0d |
| 55 | 2.4.2.1 | Unit Level Testing | 48h | 2016-01-05 | 2016-01-13 |  | 0d |
| 56 | 2.4.2.2 | Component Level Testing | 24h | 2016-01-13 | 2016-01-18 | 55 | 0d |
| 57 | 2.4.3 | WPI & Demo | 4h | 2016-01-18 | 2016-01-18 | 54 | 0d |
| 58 | 2.5 | **Agile Sprint 5 - Customer Loyalty** | 44.5d | 2016-01-19 | 2016-03-21 | 52 | 0d |
| 59 | 2.5.1 | Customer Loyalty System Integration Development | 280h | 2016-01-19 | 2016-03-07 |  | 0d |
| 60 | 2.5.2 | **Testing** | 9d | 2016-03-08 | 2016-03-18 | 59 | 0d |
| 61 | 2.5.2.1 | Unit Level Testing | 48h | 2016-03-08 | 2016-03-15 |  | 0d |
| 62 | 2.5.2.2 | Component Level Testing | 24h | 2016-03-16 | 2016-03-18 | 61 | 0d |
| 63 | 2.5.3 | WPI & Demo | 4h | 2016-03-21 | 2016-03-21 | 60 | 0d |
| 64 | 2.6 | **Agile Sprint 6 - Integration/Test** | 10.5d | 2016-03-21 | 2016-04-04 | 58 | 0d |
| 65 | 2.6.1 | **System Level Integration Testing** | 10d | 2016-03-21 | 2016-04-04 |  | 0d |
| 66 | 2.6.1.1 | Customer Loyalty System Integration Testing | 40h | 2016-03-21 | 2016-03-28 |  | 0d |
| 67 | 2.6.1.2 | Inventory System Integration Testing | 40h | 2016-03-28 | 2016-04-04 | 66 | 0d |
| 68 | 2.6.2 | WPI & Demo | 4h | 2016-04-04 | 2016-04-04 | 65 | 0d |
| 69 | 2.7 | **Agile Sprint 7 - OCF Smart Cart Software** | 49.5d | 2016-04-05 | 2016-06-13 | 64 | 0d |
| 70 | 2.7.1 | OCF Smart Cart System Integration Development | 280h | 2016-04-05 | 2016-05-23 |  | 0d |
| 71 | 2.7.2 | Software Customization | 40h | 2016-05-24 | 2016-05-30 | 70 | 0d |
| 72 | 2.7.3 | **Testing** | 9d | 2016-05-31 | 2016-06-10 | 71 | 0d |
| 73 | 2.7.3.1 | Unit Level Testing | 48h | 2016-05-31 | 2016-06-07 |  | 0d |
| 74 | 2.7.3.2 | Component Level Testing | 24h | 2016-06-08 | 2016-06-10 | 73 | 0d |
| 75 | 2.7.4 | WPI & Demo | 4h | 2016-06-13 | 2016-06-13 | 72 | 0d |

| ID | WBS | Task | Duration | Start | Finish | Predecessors | Total slack |
| --- | --- | --- | --- | --- | --- | --- | --- |
| 76 | 2.8 | **Agile Sprint 8 - OCF Integration/Test** | 5.5d | 2016-06-13 | 2016-06-20 | 69 | 0d |
| 77 | 2.8.1 | **System Level Integration Testing** | 5d | 2016-06-13 | 2016-06-20 |  | 0d |
| 78 | 2.8.1.1 | OCF Smart Cart System Integration Testing | 40h | 2016-06-13 | 2016-06-20 |  | 0d |
| 79 | 2.8.2 | WPI & Demo | 4h | 2016-06-20 | 2016-06-20 | 77 | 0d |
| 80 | 2.9 | **Agile Sprint 9 - Software Installation** | 11.5d | 2016-06-21 | 2016-07-06 | 76 | 0d |
| 81 | 2.9.1 | Install Customer Loyalty System Integration Software | 40h | 2016-06-21 | 2016-06-27 |  | 0d |
| 82 | 2.9.2 | Install Inventory System Integration Software | 40h | 2016-06-28 | 2016-07-04 | 81 | 0d |
| 83 | 2.9.3 | Install OCF Smart Cart Softtware | 8h | 2016-07-05 | 2016-07-05 | 82 | 0d |
| 84 | 2.9.4 | WPI & Demo | 4h | 2016-07-06 | 2016-07-06 | 83 | 0d |
| 85 | 2.10 | Acceptance Testing | 80h | 2016-07-06 | 2016-07-20 | 80 | 0d |
